# Demo_TKTTPM

Schedule from MS Project, 2025-02-04 to 2025-05-22, status date 2025-05-22, A marks actual dates.

## Calendars

- Standard: Mon off; Tue 08:00-12:00; Wed 08:00-11:00, 13:00-17:00; Thu-Sun off. Exceptions (off unless hours are given): 2025-05-22 08:00-12:00, 13:00-17:00.

## Resources

| Resource | Group |
| --- | --- |
| Nguyễn Thành Luân | Human Resource |
| Dương Thái Bảo | Human Resource |
| Phan Đình Thái | Human Resource |
| Lê Nguyễn Duy Khang | Human Resource |
| 5 |  |
| 4 |  |

## Schedule

| ID | WBS | Task | Type | Duration | Start | Finish | Predecessors | Complete | Resources | Work | Actual work |
| --- | --- | --- | --- | --- | --- | --- | --- | --- | --- | --- | --- |
| 1 | 1 | **Hệ thống website diễn đàn iDev4rum** |  | 22.38d | 2025-02-04 08:00 A | 2025-05-22 11:00 A |  | 100% |  | 705h | 705h |
| 2 | 1.1 | **Khởi động dự án** |  | 4.5d | 2025-02-04 08:00 A | 2025-02-25 11:00 A |  | 100% |  | 38h | 38h |
| 3 | 1.1.1 | **Thành lập nhóm** |  | 1d | 2025-02-04 08:00 A | 2025-02-05 14:00 A |  | 100% |  | 22h | 22h |
| 4 | 1.1.1.1 | Xác định thành viên nhóm |  | 4h | 2025-02-04 08:00 A | 2025-02-04 12:00 A |  | 100% | Dương Thái Bảo | 4h | 4h |
| 5 | 1.1.1.2 | Bầu nhóm trưởng |  | 4h | 2025-02-05 08:00 A | 2025-02-05 14:00 A | 4 | 100% | Dương Thái Bảo; Lê Nguyễn Duy Khang; Nguyễn Thành Luân; Phan Đình Thái | 16h | 16h |
| 6 | 1.1.1.3 | Phân công vai trò và nhiệm vụ cho từng thành viên |  | 2h | 2025-02-04 10:00 A | 2025-02-04 12:00 A | 5SF | 100% | Dương Thái Bảo | 2h | 2h |
| 7 | 1.1.2 | **Xác định đề tài và mục tiêu dự án** |  | 4d | 2025-02-05 08:00 A | 2025-02-25 11:00 A |  | 100% |  | 16h | 16h |
| 8 | 1.1.2.1 | Lập kế hoạch phát triển |  | 4d | 2025-02-05 08:00 A | 2025-02-25 11:00 A | 6 | 100% |  |  |  |
| 9 | 1.1.2.2 | Mô tả mục tiêu của iDev4rum |  | 4h | 2025-02-05 08:00 A | 2025-02-05 14:00 A | 8 | 100% | Dương Thái Bảo; Lê Nguyễn Duy Khang; Nguyễn Thành Luân; Phan Đình Thái | 16h | 16h |
| 10 | 1.1.3 | Hoàn thành khởi động dự án | milestone, manual | 0d | 2025-02-04 08:00 A | 2025-02-04 08:00 A |  | 100% |  |  |  |
| 11 | 1.2 | **Lập kế hoạch và Thu thập yêu cầu** |  | 1.75d | 2025-02-05 14:00 A | 2025-02-12 17:00 A |  | 100% |  | 30h | 30h |
| 12 | 1.2.1 | **Thu thập yêu cầu** |  | 1.25d | 2025-02-05 14:00 A | 2025-02-12 11:00 A |  | 100% |  | 14h | 14h |
| 13 | 1.2.1.1 | Khảo sát nhu cầu người dùng |  | 4h | 2025-02-05 14:00 A | 2025-02-11 09:00 A | 9 | 100% | Nguyễn Thành Luân; Phan Đình Thái | 8h | 8h |
| 14 | 1.2.1.2 | Phân loại các loại nội dung bài viết |  | 4h | 2025-02-11 09:00 A | 2025-02-12 09:00 A | 13 | 100% | Lê Nguyễn Duy Khang | 4h | 4h |
| 15 | 1.2.1.3 | Ghi nhận yêu cầu chức năng |  | 2h | 2025-02-12 09:00 A | 2025-02-12 11:00 A | 14 | 100% | Dương Thái Bảo | 2h | 2h |
| 16 | 1.2.2 | Hoàn thành thu thập yêu cầu | milestone, manual | 0d | 2025-02-05 14:00 A | 2025-02-05 14:00 A |  | 100% |  |  |  |
| 17 | 1.2.3 | **Phân tích yêu cầu** |  | 1d | 2025-02-11 11:00 A | 2025-02-12 17:00 A |  | 100% |  | 16h | 16h |
| 18 | 1.2.3.1 | Xác định công nghệ sử dụng |  | 4h | 2025-02-12 13:00 A | 2025-02-12 17:00 A | 15 | 100% | Dương Thái Bảo; Nguyễn Thành Luân | 8h | 8h |
| 19 | 1.2.3.2 | Đánh giá rủi ro |  | 4h | 2025-02-11 11:00 A | 2025-02-12 11:00 A | 18SF | 100% | Phan Đình Thái | 4h | 4h |
| 20 | 1.2.3.3 | Phân loại yêu cầu |  | 4h | 2025-02-12 13:00 A | 2025-02-12 17:00 A | 19 | 100% | Lê Nguyễn Duy Khang | 4h | 4h |
| 21 | 1.2.4 | Hoàn thành lập kế hoạch và phân tích yêu cầu | milestone, manual | 0d | 2025-02-05 14:00 A | 2025-02-05 14:00 A |  | 100% |  |  |  |
| 22 | 1.3 | **Thiết kế kiến trúc phần mềm** |  | 2.25d | 2025-02-18 08:00 A | 2025-02-26 11:00 A |  | 100% |  | 60h | 60h |
| 23 | 1.3.1 | **Phân tích kiến trúc** |  | 1.25d | 2025-02-18 08:00 A | 2025-02-19 16:00 A |  | 100% |  | 28h | 28h |
| 24 | 1.3.1.1 | Xác định kiểu kiến trúc |  | 4h | 2025-02-18 08:00 A | 2025-02-18 12:00 A | 20 | 100% | Dương Thái Bảo; Lê Nguyễn Duy Khang; Nguyễn Thành Luân; Phan Đình Thái | 16h | 16h |
| 25 | 1.3.1.2 | So sánh kiến trúc và lựa chọn phù hợp. |  | 2h | 2025-02-19 08:00 A | 2025-02-19 10:00 A | 24 | 100% | Dương Thái Bảo; Nguyễn Thành Luân | 4h | 4h |
| 26 | 1.3.1.3 | Lập tiêu chí để đánh giá kiến trúc. |  | 4h | 2025-02-19 10:00 A | 2025-02-19 16:00 A | 25 | 100% | Lê Nguyễn Duy Khang; Phan Đình Thái | 8h | 8h |

| ID | WBS | Task | Type | Duration | Start | Finish | Predecessors | Complete | Constraint | Resources | Work | Actual work |
| --- | --- | --- | --- | --- | --- | --- | --- | --- | --- | --- | --- | --- |
| 27 | 1.3.2 | **Mô hình hóa kiến trúc** |  | 1d | 2025-02-19 16:00 A | 2025-02-26 11:00 A |  | 100% |  |  | 32h | 32h |
| 28 | 1.3.2.1 | Vẽ sơ đồ |  | 4h | 2025-02-19 16:00 A | 2025-02-25 11:00 A | 26 | 100% |  | Dương Thái Bảo; Lê Nguyễn Duy Khang; Nguyễn Thành Luân; Phan Đình Thái | 16h | 16h |
| 29 | 1.3.2.2 | Vẽ mô hình cơ sở dữ liệu |  | 4h | 2025-02-25 11:00 A | 2025-02-26 11:00 A | 28 | 100% |  | Dương Thái Bảo; Lê Nguyễn Duy Khang; Nguyễn Thành Luân; Phan Đình Thái | 16h | 16h |
| 30 | 1.3.3 | Hoàn thành thiết kế kiến trúc phần mềm | milestone, manual | 0d | 2025-02-18 08:00 A | 2025-02-18 08:00 A |  | 100% |  |  |  |  |
| 31 | 1.4 | **Xây dựng cấu trúc dự án** |  | 0.75d | 2025-02-26 13:00 A | 2025-03-04 10:00 A | 29 | 100% |  | Dương Thái Bảo | 13h | 13h |
| 32 | 1.4.1 | Thiết lập GitHub repository |  | 1h | 2025-02-26 13:00 A | 2025-02-26 14:00 A |  | 100% |  | Nguyễn Thành Luân | 1h | 1h |
| 33 | 1.4.2 | Thiết lập cấu trúc dự án |  | 2h | 2025-02-26 13:00 A | 2025-02-26 15:00 A |  | 100% |  | Dương Thái Bảo | 2h | 2h |
| 34 | 1.4.3 | Hướng dẫn quản lý & quy tắc mã nguồn |  | 4h | 2025-02-26 15:00 A | 2025-03-04 10:00 A | 32, 33 | 100% |  | Dương Thái Bảo | 4h | 4h |
| 35 | 1.4.4 | Hoàn tất cấu trúc dự án | milestone, manual | 0d | 2025-02-26 13:00 A | 2025-02-26 13:00 A |  | 100% |  |  |  |  |
| 36 | 1.5 | **UI/UX Design** |  | 1.88d | 2025-03-04 10:00 A | 2025-03-12 10:00 A |  | 100% |  |  | 47h | 47h |
| 37 | 1.5.1 | **Giao diện người dùng** |  | 1.88d | 2025-03-04 10:00 A | 2025-03-12 10:00 A | 31 | 100% |  |  | 47h | 47h |
| 38 | 1.5.1.1 | **Giao diện khách** |  | 1.12d | 2025-03-04 10:00 A | 2025-03-05 17:00 A |  | 100% |  |  | 25h | 25h |
| 39 | 1.5.1.1.1 | Trang đăng nhập |  | 2h | 2025-03-04 10:00 A | 2025-03-04 12:00 A | 31 | 100% | start no earlier than 2025-02-24 08:00 | Lê Nguyễn Duy Khang | 2h | 2h |
| 40 | 1.5.1.1.2 | Trang đăng ký |  | 2h | 2025-03-05 08:00 A | 2025-03-05 10:00 A | 39 | 100% |  | Lê Nguyễn Duy Khang | 2h | 2h |
| 41 | 1.5.1.1.3 | Trang chủ |  | 4h | 2025-03-05 10:00 A | 2025-03-05 16:00 A | 40 | 100% |  | Lê Nguyễn Duy Khang | 4h | 4h |
| 42 | 1.5.1.1.4 | **Hồ sơ người dùng** |  | 0.5d | 2025-03-04 10:00 A | 2025-03-05 10:00 A |  | 100% |  |  | 4h | 4h |
| 43 | 1.5.1.1.4.1 | Danh sách bài viết |  | 2h | 2025-03-04 10:00 A | 2025-03-04 12:00 A | 31 | 100% |  | Nguyễn Thành Luân | 2h | 2h |
| 44 | 1.5.1.1.4.2 | Danh sách theo dõi |  | 2h | 2025-03-05 08:00 A | 2025-03-05 10:00 A | 43 | 100% |  | Nguyễn Thành Luân | 2h | 2h |
| 45 | 1.5.1.1.5 | **Quản lý bài viết** |  | 0.62d | 2025-03-04 10:00 A | 2025-03-05 11:00 A |  | 100% |  |  | 5h | 5h |
| 46 | 1.5.1.1.5.1 | Tạo bài viết |  | 2h | 2025-03-04 10:00 A | 2025-03-04 12:00 A | 31 | 100% |  | Dương Thái Bảo | 2h | 2h |
| 47 | 1.5.1.1.5.2 | Sửa bài viết |  | 2h | 2025-03-05 08:00 A | 2025-03-05 10:00 A | 46 | 100% |  | Dương Thái Bảo | 2h | 2h |
| 48 | 1.5.1.1.5.3 | Xoá bài viết |  | 1h | 2025-03-05 10:00 A | 2025-03-05 11:00 A | 47 | 100% |  | Dương Thái Bảo | 1h | 1h |
| 49 | 1.5.1.1.6 | Tìm kiếm nội dung |  | 4h | 2025-03-05 13:00 A | 2025-03-05 17:00 A | 48 | 100% |  | Dương Thái Bảo | 4h | 4h |
| 50 | 1.5.1.1.7 | Trang đề xuất nội dung |  | 2h | 2025-03-04 10:00 A | 2025-03-04 12:00 A | 31 | 100% |  | Phan Đình Thái | 2h | 2h |
| 51 | 1.5.1.1.8 | Xem bình luận bài viết |  | 1h | 2025-03-05 08:00 A | 2025-03-05 09:00 A | 50 | 100% |  | Phan Đình Thái | 1h | 1h |
| 52 | 1.5.1.1.9 | Viết bình luận |  | 1h | 2025-03-05 09:00 A | 2025-03-05 10:00 A | 51 | 100% |  | Phan Đình Thái | 1h | 1h |

| ID | WBS | Task | Type | Duration | Start | Finish | Predecessors | Complete | Resources | Work | Actual work |
| --- | --- | --- | --- | --- | --- | --- | --- | --- | --- | --- | --- |
| 53 | 1.5.1.2 | **Giao diện admin** |  | 1.62d | 2025-03-05 08:00 A | 2025-03-12 10:00 A |  | 100% |  | 22h | 22h |
| 54 | 1.5.1.2.1 | Dashboard |  | 2h | 2025-03-05 08:00 A | 2025-03-05 10:00 A | 43 | 100% | Nguyễn Thành Luân | 2h | 2h |
| 55 | 1.5.1.2.2 | **Quản lý bài viết** |  | 0.88d | 2025-03-05 10:00 A | 2025-03-11 10:00 A |  | 100% |  | 6h | 6h |
| 56 | 1.5.1.2.2.1 | Liệt kê bài viết |  | 2h | 2025-03-05 10:00 A | 2025-03-05 14:00 A | 52 | 100% | Phan Đình Thái | 2h | 2h |
| 57 | 1.5.1.2.2.2 | Tìm kiếm bài viết |  | 2h | 2025-03-11 08:00 A | 2025-03-11 10:00 A | 49 | 100% | Dương Thái Bảo | 2h | 2h |
| 58 | 1.5.1.2.2.3 | Xoá bài viết |  | 2h | 2025-03-05 16:00 A | 2025-03-11 09:00 A | 41 | 100% | Lê Nguyễn Duy Khang | 2h | 2h |
| 59 | 1.5.1.2.3 | **Quản lý bình luận** |  | 0.75d | 2025-03-05 14:00 A | 2025-03-11 11:00 A |  | 100% |  | 4h | 4h |
| 60 | 1.5.1.2.3.1 | Sửa bình luận |  | 2h | 2025-03-11 09:00 A | 2025-03-11 11:00 A | 58 | 100% | Lê Nguyễn Duy Khang | 2h | 2h |
| 61 | 1.5.1.2.3.2 | Xoá bình luận |  | 2h | 2025-03-05 14:00 A | 2025-03-05 16:00 A | 56 | 100% | Phan Đình Thái | 2h | 2h |
| 62 | 1.5.1.2.4 | **Quản lý báo cáo** |  | 1.12d | 2025-03-05 10:00 A | 2025-03-11 12:00 A |  | 100% |  | 4h | 4h |
| 63 | 1.5.1.2.4.1 | Xem thành viên bị báo cáo |  | 2h | 2025-03-05 10:00 A | 2025-03-05 14:00 A | 54 | 100% | Nguyễn Thành Luân | 2h | 2h |
| 64 | 1.5.1.2.4.2 | Xử lý báo cáo |  | 2h | 2025-03-11 10:00 A | 2025-03-11 12:00 A | 57 | 100% | Dương Thái Bảo | 2h | 2h |
| 65 | 1.5.1.2.5 | **Quản lý người dùng** |  | 0.88d | 2025-03-05 16:00 A | 2025-03-12 10:00 A |  | 100% |  | 6h | 6h |
| 66 | 1.5.1.2.5.1 | Liệt kê người dùng |  | 2h | 2025-03-05 16:00 A | 2025-03-11 09:00 A | 61 | 100% | Phan Đình Thái | 2h | 2h |
| 67 | 1.5.1.2.5.2 | Chỉnh sửa thông tin |  | 2h | 2025-03-11 11:00 A | 2025-03-12 09:00 A | 60 | 100% | Lê Nguyễn Duy Khang | 2h | 2h |
| 68 | 1.5.1.2.5.3 | Tìm kiếm người dùng |  | 2h | 2025-03-12 08:00 A | 2025-03-12 10:00 A | 64 | 100% | Dương Thái Bảo | 2h | 2h |
| 69 | 1.6 | **Phát triển phần mềm** |  | 12d | 2025-03-05 10:00 A | 2025-05-06 11:00 A |  | 100% |  | 376h | 376h |
| 70 | 1.6.1 | **Xây dựng ứng dụng** |  | 12d | 2025-03-05 10:00 A | 2025-05-06 11:00 A |  | 100% |  | 376h | 376h |
| 71 | 1.6.1.1 | **Phát triển các microservice** |  | 2.12d | 2025-03-05 10:00 A | 2025-03-18 09:00 A |  | 100% |  | 28h | 28h |
| 72 | 1.6.1.1.1 | CRUD authenticate-service | manual | 4h | 2025-03-12 08:00 A | 2025-03-12 14:00 A | 64 | 100% | Dương Thái Bảo | 4h | 4h |
| 73 | 1.6.1.1.2 | CRUD comment-service | manual | 4h | 2025-03-05 10:00 A | 2025-03-05 16:00 A | 54 | 100% | Nguyễn Thành Luân | 4h | 4h |
| 74 | 1.6.1.1.3 | CRUD file-service | manual | 4h | 2025-03-05 16:00 A | 2025-03-11 11:00 A | 73 | 100% | Nguyễn Thành Luân | 4h | 4h |
| 75 | 1.6.1.1.4 | CRUD post-service | manual | 4h | 2025-03-11 11:00 A | 2025-03-12 11:00 A | 60 | 100% | Lê Nguyễn Duy Khang | 4h | 4h |
| 76 | 1.6.1.1.5 | CRUD postreport-service | manual | 4h | 2025-03-11 11:00 A | 2025-03-12 11:00 A | 74 | 100% | Nguyễn Thành Luân | 4h | 4h |
| 77 | 1.6.1.1.6 | CRUD user-service | manual | 4h | 2025-03-05 16:00 A | 2025-03-11 11:00 A | 61 | 100% | Phan Đình Thái | 4h | 4h |
| 78 | 1.6.1.1.7 | API gateway | manual | 4h | 2025-03-12 14:00 A | 2025-03-18 09:00 A | 72 | 100% | Dương Thái Bảo | 4h | 4h |

| ID | WBS | Task | Duration | Start | Finish | Predecessors | Complete | Constraint | Resources | Work | Actual work |
| --- | --- | --- | --- | --- | --- | --- | --- | --- | --- | --- | --- |
| 79 | 1.6.1.2 | **Giao diện người dùng** | 3.12d | 2025-03-12 10:00 A | 2025-03-26 15:00 A | 36 | 100% |  |  | 92h | 92h |
| 80 | 1.6.1.2.1 | **Giao diện khách** | 3.12d | 2025-03-12 10:00 A | 2025-03-26 15:00 A |  | 100% |  |  | 50h | 50h |
| 81 | 1.6.1.2.1.1 | Trang đăng nhập | 2h | 2025-03-12 10:00 A | 2025-03-12 14:00 A | 68 | 100% | start no earlier than 2025-02-24 08:00 | Dương Thái Bảo; Lê Nguyễn Duy Khang | 4h | 4h |
| 82 | 1.6.1.2.1.2 | Trang đăng ký | 2h | 2025-03-12 14:00 A | 2025-03-12 16:00 A | 81 | 100% |  | Dương Thái Bảo; Lê Nguyễn Duy Khang | 4h | 4h |
| 83 | 1.6.1.2.1.3 | Trang chủ | 4h | 2025-03-12 16:00 A | 2025-03-18 11:00 A | 82 | 100% |  | Dương Thái Bảo; Lê Nguyễn Duy Khang | 8h | 8h |
| 84 | 1.6.1.2.1.4 | **Hồ sơ người dùng** | 0.5d | 2025-03-18 11:00 A | 2025-03-19 11:00 A |  | 100% |  |  | 8h | 8h |
| 85 | 1.6.1.2.1.4.1 | Danh sách bài viết | 2h | 2025-03-18 11:00 A | 2025-03-19 09:00 A | 83 | 100% |  | Dương Thái Bảo; Lê Nguyễn Duy Khang | 4h | 4h |
| 86 | 1.6.1.2.1.4.2 | Danh sách theo dõi | 2h | 2025-03-19 09:00 A | 2025-03-19 11:00 A | 85 | 100% |  | Dương Thái Bảo; Lê Nguyễn Duy Khang | 4h | 4h |
| 87 | 1.6.1.2.1.5 | **Quản lý bài viết** | 0.62d | 2025-03-19 13:00 A | 2025-03-25 09:00 A |  | 100% |  |  | 10h | 10h |
| 88 | 1.6.1.2.1.5.1 | Tạo bài viết | 2h | 2025-03-19 13:00 A | 2025-03-19 15:00 A | 86 | 100% |  | Dương Thái Bảo; Lê Nguyễn Duy Khang | 4h | 4h |
| 89 | 1.6.1.2.1.5.2 | Sửa bài viết | 2h | 2025-03-19 15:00 A | 2025-03-19 17:00 A | 88 | 100% |  | Dương Thái Bảo; Lê Nguyễn Duy Khang | 4h | 4h |
| 90 | 1.6.1.2.1.5.3 | Xoá bài viết | 1h | 2025-03-25 08:00 A | 2025-03-25 09:00 A | 89 | 100% |  | Dương Thái Bảo; Lê Nguyễn Duy Khang | 2h | 2h |
| 91 | 1.6.1.2.1.6 | Tìm kiếm nội dung | 4h | 2025-03-25 09:00 A | 2025-03-26 09:00 A | 90 | 100% |  | Dương Thái Bảo; Lê Nguyễn Duy Khang | 8h | 8h |
| 92 | 1.6.1.2.1.7 | Trang đề xuất nội dung | 2h | 2025-03-26 09:00 A | 2025-03-26 11:00 A | 91 | 100% |  | Dương Thái Bảo; Lê Nguyễn Duy Khang | 4h | 4h |
| 93 | 1.6.1.2.1.8 | Xem bình luận bài viết | 1h | 2025-03-26 13:00 A | 2025-03-26 14:00 A | 92 | 100% |  | Dương Thái Bảo; Lê Nguyễn Duy Khang | 2h | 2h |
| 94 | 1.6.1.2.1.9 | Viết bình luận | 1h | 2025-03-26 14:00 A | 2025-03-26 15:00 A | 93 | 100% |  | Dương Thái Bảo; Lê Nguyễn Duy Khang | 2h | 2h |
| 95 | 1.6.1.2.2 | **Giao diện admin** | 2.5d | 2025-03-12 10:00 A | 2025-03-25 12:00 A | 68 | 100% |  |  | 42h | 42h |
| 96 | 1.6.1.2.2.1 | Dashboard | 2h | 2025-03-12 10:00 A | 2025-03-12 14:00 A | 54 | 100% |  | Nguyễn Thành Luân | 2h | 2h |
| 97 | 1.6.1.2.2.2 | **Quản lý bài viết** | 0.75d | 2025-03-12 10:00 A | 2025-03-18 09:00 A |  | 100% |  |  | 12h | 12h |
| 98 | 1.6.1.2.2.2.1 | Liệt kê bài viết | 2h | 2025-03-12 10:00 A | 2025-03-12 14:00 A | 54 | 100% |  | Nguyễn Thành Luân; Phan Đình Thái | 4h | 4h |
| 99 | 1.6.1.2.2.2.2 | Tìm kiếm bài viết | 2h | 2025-03-12 14:00 A | 2025-03-12 16:00 A | 98 | 100% |  | Nguyễn Thành Luân; Phan Đình Thái | 4h | 4h |
| 100 | 1.6.1.2.2.2.3 | Xoá bài viết | 2h | 2025-03-12 16:00 A | 2025-03-18 09:00 A | 99 | 100% |  | Nguyễn Thành Luân; Phan Đình Thái | 4h | 4h |
| 101 | 1.6.1.2.2.3 | **Quản lý bình luận** | 0.5d | 2025-03-18 09:00 A | 2025-03-19 09:00 A |  | 100% |  |  | 8h | 8h |
| 102 | 1.6.1.2.2.3.1 | Sửa bình luận | 2h | 2025-03-18 09:00 A | 2025-03-18 11:00 A | 100 | 100% |  | Nguyễn Thành Luân; Phan Đình Thái | 4h | 4h |
| 103 | 1.6.1.2.2.3.2 | Xoá bình luận | 2h | 2025-03-18 11:00 A | 2025-03-19 09:00 A | 102 | 100% |  | Nguyễn Thành Luân; Phan Đình Thái | 4h | 4h |

| ID | WBS | Task | Type | Duration | Start | Finish | Predecessors | Complete | Resources | Work | Actual work |
| --- | --- | --- | --- | --- | --- | --- | --- | --- | --- | --- | --- |
| 104 | 1.6.1.2.2.4 | **Quản lý báo cáo** |  | 0.5d | 2025-03-19 09:00 A | 2025-03-19 15:00 A |  | 100% |  | 8h | 8h |
| 105 | 1.6.1.2.2.4.1 | Xem thành viên bị báo cáo |  | 2h | 2025-03-19 09:00 A | 2025-03-19 11:00 A | 103 | 100% | Nguyễn Thành Luân; Phan Đình Thái | 4h | 4h |
| 106 | 1.6.1.2.2.4.2 | Xử lý báo cáo |  | 2h | 2025-03-19 13:00 A | 2025-03-19 15:00 A | 105 | 100% | Nguyễn Thành Luân; Phan Đình Thái | 4h | 4h |
| 107 | 1.6.1.2.2.5 | **Quản lý người dùng** |  | 0.75d | 2025-03-19 15:00 A | 2025-03-25 12:00 A |  | 100% |  | 12h | 12h |
| 108 | 1.6.1.2.2.5.1 | Liệt kê người dùng |  | 2h | 2025-03-19 15:00 A | 2025-03-19 17:00 A | 106 | 100% | Nguyễn Thành Luân; Phan Đình Thái | 4h | 4h |
| 109 | 1.6.1.2.2.5.2 | Chỉnh sửa thông tin |  | 2h | 2025-03-25 08:00 A | 2025-03-25 10:00 A | 108 | 100% | Nguyễn Thành Luân; Phan Đình Thái | 4h | 4h |
| 110 | 1.6.1.2.2.5.3 | Tìm kiếm người dùng |  | 2h | 2025-03-25 10:00 A | 2025-03-25 12:00 A | 109 | 100% | Nguyễn Thành Luân; Phan Đình Thái | 4h | 4h |
| 111 | 1.6.1.3 | Tổng hợp & tích hợp API Backend |  | 60h | 2025-03-26 15:00 A | 2025-05-06 11:00 A | 79 | 100% | Dương Thái Bảo; Lê Nguyễn Duy Khang; Nguyễn Thành Luân; Phan Đình Thái | 240h | 240h |
| 112 | 1.6.1.4 | **Kiếm thử hệ thống** |  | 0.5d | 2025-03-26 15:00 A | 2025-04-01 10:00 A |  | 100% |  | 16h | 16h |
| 113 | 1.6.1.4.1 | Kiểm thử đơn vi |  | 4h | 2025-03-26 15:00 A | 2025-04-01 10:00 A | 79, 37 | 100% | Dương Thái Bảo; Nguyễn Thành Luân | 8h | 8h |
| 114 | 1.6.1.4.2 | Kiểm thử tích hợp |  | 4h | 2025-03-26 15:00 A | 2025-04-01 10:00 A | 113SS | 100% | Dương Thái Bảo; Nguyễn Thành Luân | 8h | 8h |
| 115 | 1.6.2 | Hoàn thành phát triển phần mềm | milestone, manual | 0d | 2025-04-01 10:00 A | 2025-04-01 10:00 A | 114 | 100% |  |  |  |
| 116 | 1.7 | **Kiểm thử và Triển khai** |  | 8.88d | 2025-03-26 15:00 A | 2025-05-13 11:00 A |  | 100% |  | 29h | 29h |
| 117 | 1.7.1 | **Kiểm thử** |  | 8d | 2025-03-26 15:00 A | 2025-05-07 13:00 A |  | 100% |  | 16h | 16h |
| 118 | 1.7.1.1 | Kiểm tra giao diện |  | 4h | 2025-03-26 15:00 A | 2025-04-01 10:00 A | 79, 37 | 100% | Lê Nguyễn Duy Khang; Phan Đình Thái | 8h | 8h |
| 119 | 1.7.1.2 | Kiểm thử hiệu năng |  | 4h | 2025-05-06 11:00 A | 2025-05-07 11:00 A | 111 | 100% | Dương Thái Bảo; Nguyễn Thành Luân | 8h | 8h |
| 120 | 1.7.1.3 | Ghi lại kết quả kiểm thử và sửa lỗi | milestone, manual | 0d | 2025-05-07 13:00 A | 2025-05-07 13:00 A | 119 | 100% |  |  |  |
| 121 | 1.7.2 | **Triển khai** |  | 0.88d | 2025-05-07 13:00 A | 2025-05-13 11:00 A |  | 100% |  | 13h | 13h |
| 122 | 1.7.2.1 | Đóng gói ứng dụng bằng Docker. |  | 2h | 2025-05-07 13:00 A | 2025-05-07 15:00 A | 119 | 100% | Dương Thái Bảo | 2h | 2h |
| 123 | 1.7.2.2 | Deploy lên server |  | 2h | 2025-05-07 15:00 A | 2025-05-07 17:00 A | 122 | 100% | Dương Thái Bảo | 2h | 2h |
| 124 | 1.7.2.3 | Chuẩn bị tài liệu hướng dẫn sử dụng. |  | 3h | 2025-05-13 08:00 A | 2025-05-13 11:00 A | 123 | 100% | Lê Nguyễn Duy Khang; Nguyễn Thành Luân; Phan Đình Thái | 9h | 9h |
| 125 | 1.7.3 | Hoàn thành kiểm thử và triển khai | milestone | 0d | 2025-05-07 17:00 A | 2025-05-07 17:00 A | 123 | 100% |  |  |  |
| 126 | 1.8 | **Trình bày và Đánh giá** |  | 3.12d | 2025-05-13 08:00 A | 2025-05-22 11:00 A | 125 | 100% |  | 112h | 112h |
| 127 | 1.8.1 | **Chuẩn bị báo cáo** |  | 2.75d | 2025-05-13 08:00 A | 2025-05-21 17:00 A |  | 100% |  | 88h | 88h |
| 128 | 1.8.1.1 | Rà soát & hiệu chỉnh báo cáo |  | 2h | 2025-05-13 08:00 A | 2025-05-13 10:00 A | 125 | 100% | Dương Thái Bảo; Lê Nguyễn Duy Khang; Nguyễn Thành Luân; Phan Đình Thái | 8h | 8h |
| 129 | 1.8.1.2 | Tông hợp tài liệu báo cáo |  | 2h | 2025-05-13 10:00 A | 2025-05-13 12:00 A | 128 | 100% | Dương Thái Bảo; Lê Nguyễn Duy Khang; Nguyễn Thành Luân; Phan Đình Thái | 8h | 8h |
| 130 | 1.8.1.3 | Tổng hợp sơ đồ kiến trúc và mô hình dữ liệu. |  | 2h | 2025-05-14 08:00 A | 2025-05-14 10:00 A | 129 | 100% | Dương Thái Bảo; Lê Nguyễn Duy Khang; Nguyễn Thành Luân; Phan Đình Thái | 8h | 8h |
| 131 | 1.8.1.4 | Kiểm tra lại tài liệu |  | 16h | 2025-05-14 10:00 A | 2025-05-21 17:00 A | 130 | 100% | Dương Thái Bảo; Lê Nguyễn Duy Khang; Nguyễn Thành Luân; Phan Đình Thái | 64h | 64h |

| ID | WBS | Task | Type | Duration | Start | Finish | Predecessors | Complete | Constraint | Resources | Work | Actual work |
| --- | --- | --- | --- | --- | --- | --- | --- | --- | --- | --- | --- | --- |
| 132 | 1.8.2 | **Trình bày dự án** |  | 0.25d | 2025-05-22 08:00 A | 2025-05-22 10:00 A |  | 100% |  |  | 16h | 16h |
| 133 | 1.8.2.1 | Trình bày trước giáo viên |  | 2h | 2025-05-22 08:00 A | 2025-05-22 10:00 A | 131 | 100% |  | Dương Thái Bảo; Lê Nguyễn Duy Khang; Nguyễn Thành Luân; Phan Đình Thái | 8h | 8h |
| 134 | 1.8.2.2 | Trả lời phản biện |  | 2h | 2025-05-22 08:00 A | 2025-05-22 10:00 A | 133SF | 100% | start no earlier than 2025-05-22 08:00 | Dương Thái Bảo; Lê Nguyễn Duy Khang; Nguyễn Thành Luân; Phan Đình Thái | 8h | 8h |
| 135 | 1.8.3 | **Thu thập phản hồi** |  | 0.12d | 2025-05-22 10:00 A | 2025-05-22 11:00 A |  | 100% |  |  | 8h | 8h |
| 136 | 1.8.3.1 | Ghi nhận đánh giá từ giảng viên |  | 1h | 2025-05-22 10:00 A | 2025-05-22 11:00 A | 133 | 100% | start no earlier than 2025-05-22 08:00 | Dương Thái Bảo; Lê Nguyễn Duy Khang; Nguyễn Thành Luân; Phan Đình Thái | 4h | 4h |
| 137 | 1.8.3.2 | Tổng hợp đánh giá để cải thiện |  | 1h | 2025-05-22 10:00 A | 2025-05-22 11:00 A | 133 | 100% |  | Dương Thái Bảo; Lê Nguyễn Duy Khang; Nguyễn Thành Luân; Phan Đình Thái | 4h | 4h |
| 138 | 2 | Hoàn thành dự án | milestone | 0d | 2025-05-22 11:00 A | 2025-05-22 11:00 A | 137 | 100% | finish no earlier than 2025-03-11 17:00 |  |  |  |
